# C&CProject_MasterPlan

Schedule from MS Project, 2011-09-15 to 2012-01-13, 2 hours a day, A marks actual dates.
University Of Information Technology

## Calendars

- Standard: Mon-Fri 08:00-12:00, 13:00-17:00; Sat-Sun off. Exceptions (off unless hours are given): 2011-09-17 to 2012-02-01 08:00-12:00, 13:00-17:00 (Saturday, recurring).

## Resources

| Resource |
| --- |
| HuyNVK |
| TuTM |
| TuanVA |
| DungDV |
| DucNH |
| HienTT |
| HuyDV |
| LinhTA |
| ThanhCV |
| ThaoNX |
| ThiVT |
| KhoaVT |
| All Team |
| BaoNDD |
| DungDV + DucNH + TuTM |
| ThanhCV + KhoaVT |
| HuyNVK + HienTT |
| TuanVA + BaoNDD |

## Schedule

| ID | WBS | Task | Duration | Start | Finish | Complete | Remaining | Total slack | Constraint | Resources | Work | Actual work |
| --- | --- | --- | --- | --- | --- | --- | --- | --- | --- | --- | --- | --- |
| 1 | 1 | **C&C Project** | 416d? | 2011-09-15 A | 2012-01-13 | 30% | 290.96d? | 0d |  |  | 403h | 271h |
| 2 | 1.1 | **Prepare** | 62d | 2011-09-15 A | 2011-10-03 A | 100% |  |  |  |  | 203h | 203h |
| 3 | 1.1.1 | Meeting for establishing group | 1d | 2011-09-15 A | 2011-09-15 A | 100% |  |  | start no earlier than 2011-09-15 | All Team | 2h | 2h |
| 4 | 1.1.2 | **Prepare documents, templates, development evironment** | 0.5d | 2011-09-15 A | 2011-09-15 A | 100% |  |  |  |  | 7h | 7h |
| 5 | 1.1.2.1 | Biên bản thành lập nhóm.docx | 0.5d | 2011-09-15 A | 2011-09-15 A | 100% |  |  |  | BaoNDD | 1h | 1h |
| 6 | 1.1.2.2 | Template for meeting minute | 0.5d | 2011-09-15 A | 2011-09-15 A | 100% |  |  |  | TuTM | 1h | 1h |
| 7 | 1.1.2.3 | Bảng đánh giá công việc.docx | 0.5d | 2011-09-15 A | 2011-09-15 A | 100% |  |  |  | TuanVA | 1h | 1h |
| 8 | 1.1.2.4 | Template MemberTracking.xls | 0.5d | 2011-09-15 A | 2011-09-15 A | 100% |  |  | finish no earlier than 2011-09-16 | HuyNVK | 1h | 1h |
| 9 | 1.1.2.5 | Template ScreenDesign.xls | 0.5d | 2011-09-15 A | 2011-09-15 A | 100% |  |  | finish no earlier than 2011-09-16 | HuyNVK | 1h | 1h |
| 10 | 1.1.2.6 | Template DefectLog.xls | 0.5d | 2011-09-15 A | 2011-09-15 A | 100% |  |  | finish no earlier than 2011-09-16 | HuyNVK | 1h | 1h |
| 11 | 1.1.2.7 | Set up project on Google Code | 0.5d | 2011-09-15 A | 2011-09-15 A | 100% |  |  | finish no earlier than 2011-09-16 | HuyNVK | 1h | 1h |
| 12 | 1.1.3 | **Study** | 62d | 2011-09-15 A | 2011-10-03 A | 100% |  |  |  |  | 194h | 194h |
| 13 | 1.1.3.1 | **HTML/CSS** | 2d | 2011-09-15 A | 2011-09-15 A | 100% |  |  |  |  | 4h | 4h |
| 14 | 1.1.3.1.1 | Demo design site by HTML/CSS | 2d | 2011-09-15 A | 2011-09-15 A | 100% |  |  | finish no earlier than 2011-09-19 | HuyNVK | 4h | 4h |
| 15 | 1.1.3.2 | **PHP** | 3d | 2011-09-19 A | 2011-09-19 A | 100% |  |  |  |  | 66h | 66h |
| 16 | 1.1.3.2.1 | Demo login by PHP, MySQL | 3d | 2011-09-19 A | 2011-09-19 A | 100% |  |  | finish no earlier than 2011-09-23 | DungDV | 6h | 6h |
| 17 | 1.1.3.2.2 | Demo login by PHP, MySQL | 3d | 2011-09-19 A | 2011-09-19 A | 100% |  |  | finish no earlier than 2011-09-23 | DucNH | 6h | 6h |
| 18 | 1.1.3.2.3 | Demo login by PHP, MySQL | 3d | 2011-09-19 A | 2011-09-19 A | 100% |  |  | finish no earlier than 2011-09-23 | HienTT | 6h | 6h |
| 19 | 1.1.3.2.4 | Demo login by PHP, MySQL | 3d | 2011-09-19 A | 2011-09-19 A | 100% |  |  | finish no earlier than 2011-09-23 | HuyDV | 6h | 6h |
| 20 | 1.1.3.2.5 | Demo login by PHP, MySQL | 3d | 2011-09-19 A | 2011-09-19 A | 100% |  |  | finish no earlier than 2011-09-23 | HuyNVK | 6h | 6h |
| 21 | 1.1.3.2.6 | Demo login by PHP, MySQL | 3d | 2011-09-19 A | 2011-09-19 A | 100% |  |  | finish no earlier than 2011-09-23 | LinhTA | 6h | 6h |
| 22 | 1.1.3.2.7 | Demo login by PHP, MySQL | 3d | 2011-09-19 A | 2011-09-19 A | 100% |  |  | finish no earlier than 2011-09-23 | ThanhCV | 6h | 6h |
| 23 | 1.1.3.2.8 | Demo login by PHP, MySQL | 3d | 2011-09-19 A | 2011-09-19 A | 100% |  |  | finish no earlier than 2011-09-23 | ThaoNX | 6h | 6h |
| 24 | 1.1.3.2.9 | Demo login by PHP, MySQL | 3d | 2011-09-19 A | 2011-09-19 A | 100% |  |  | finish no earlier than 2011-09-23 | ThiVT | 6h | 6h |
| 25 | 1.1.3.2.10 | Demo login by PHP, MySQL | 3d | 2011-09-19 A | 2011-09-19 A | 100% |  |  | finish no earlier than 2011-09-23 | TuTM | 6h | 6h |
| 26 | 1.1.3.2.11 | Demo login by PHP, MySQL | 3d | 2011-09-19 A | 2011-09-19 A | 100% |  |  | finish no earlier than 2011-09-23 | KhoaVT | 6h | 6h |

| ID | WBS | Task | Duration | Start | Finish | Complete | Constraint | Resources | Work | Actual work |
| --- | --- | --- | --- | --- | --- | --- | --- | --- | --- | --- |
| 27 | 1.1.3.3 | **Zend Framework** | 40d | 2011-09-15 A | 2011-09-26 A | 100% |  |  | 80h | 80h |
| 28 | 1.1.3.3.1 | MVC model and Zend Framework introduction | 2d | 2011-09-15 A | 2011-09-15 A | 100% | start no earlier than 2011-09-15 | ThaoNX | 4h | 4h |
| 29 | 1.1.3.3.2 | Set up muti-module project by Zend Studio | 1d | 2011-09-15 A | 2011-09-15 A | 100% | start no earlier than 2011-09-15 | HuyDV | 2h | 2h |
| 30 | 1.1.3.3.3 | Demo login by Zend Framework | 3d | 2011-09-26 A | 2011-09-26 A | 100% | finish no earlier than 2011-09-30 | DungDV | 6h | 6h |
| 31 | 1.1.3.3.4 | Demo login by Zend Framework | 3d | 2011-09-26 A | 2011-09-26 A | 100% | finish no earlier than 2011-09-30 | DucNH | 6h | 6h |
| 32 | 1.1.3.3.5 | Demo login by Zend Framework | 3d | 2011-09-26 A | 2011-09-26 A | 100% | finish no earlier than 2011-09-30 | HienTT | 6h | 6h |
| 33 | 1.1.3.3.6 | Demo login by Zend Framework | 3d | 2011-09-26 A | 2011-09-26 A | 100% | finish no earlier than 2011-09-30 | HuyDV | 6h | 6h |
| 34 | 1.1.3.3.7 | Demo login by Zend Framework | 3d | 2011-09-26 A | 2011-09-26 A | 100% | finish no earlier than 2011-09-30 | HuyNVK | 6h | 6h |
| 35 | 1.1.3.3.8 | Demo login by Zend Framework | 3d | 2011-09-26 A | 2011-09-26 A | 100% | finish no earlier than 2011-09-30 | LinhTA | 6h | 6h |
| 36 | 1.1.3.3.9 | Demo login by Zend Framework | 3d | 2011-09-26 A | 2011-09-26 A | 100% | finish no earlier than 2011-09-30 | ThanhCV | 6h | 6h |
| 37 | 1.1.3.3.10 | Demo login by Zend Framework | 3d | 2011-09-26 A | 2011-09-26 A | 100% | finish no earlier than 2011-09-30 | ThaoNX | 6h | 6h |
| 38 | 1.1.3.3.11 | Demo login by Zend Framework | 3d | 2011-09-26 A | 2011-09-26 A | 100% | finish no earlier than 2011-09-30 | ThiVT | 6h | 6h |
| 39 | 1.1.3.3.12 | Demo login by Zend Framework | 3d | 2011-09-26 A | 2011-09-26 A | 100% | finish no earlier than 2011-09-30 | TuTM | 6h | 6h |
| 40 | 1.1.3.3.13 | Demo login by Zend Framework | 3d | 2011-09-26 A | 2011-09-26 A | 100% | finish no earlier than 2011-09-30 | KhoaVT | 6h | 6h |
| 41 | 1.1.3.3.14 | Demo simple CMS by Zend Framework | 4d | 2011-09-26 A | 2011-09-26 A | 100% | finish no earlier than 2011-10-10 | HuyDV | 8h | 8h |
| 42 | 1.1.3.4 | **How to build CMS Project** | 2d | 2011-10-03 A | 2011-10-03 A | 100% |  |  | 44h | 44h |
| 43 | 1.1.3.4.1 | Study book "How to build a full CMS project" and give idea | 2d | 2011-10-03 A | 2011-10-03 A | 100% | finish no earlier than 2011-10-05 | ThaoNX | 4h | 4h |
| 44 | 1.1.3.4.2 | Study book "How to build a full CMS project" and give idea | 2d | 2011-10-03 A | 2011-10-03 A | 100% | finish no earlier than 2011-10-05 | HuyDV | 4h | 4h |
| 45 | 1.1.3.4.3 | Study book "How to build a full CMS project" and give idea | 2d | 2011-10-03 A | 2011-10-03 A | 100% | finish no earlier than 2011-10-05 | DungDV | 4h | 4h |
| 46 | 1.1.3.4.4 | Study book "How to build a full CMS project" and give idea | 2d | 2011-10-03 A | 2011-10-03 A | 100% | finish no earlier than 2011-10-05 | DucNH | 4h | 4h |
| 47 | 1.1.3.4.5 | Study book "How to build a full CMS project" and give idea | 2d | 2011-10-03 A | 2011-10-03 A | 100% | finish no earlier than 2011-10-05 | HienTT | 4h | 4h |
| 48 | 1.1.3.4.6 | Study book "How to build a full CMS project" and give idea | 2d | 2011-10-03 A | 2011-10-03 A | 100% | finish no earlier than 2011-10-05 | HuyDV | 4h | 4h |
| 49 | 1.1.3.4.7 | Study book "How to build a full CMS project" and give idea | 2d | 2011-10-03 A | 2011-10-03 A | 100% | finish no earlier than 2011-10-05 | HuyNVK | 4h | 4h |
| 50 | 1.1.3.4.8 | Study book "How to build a full CMS project" and give idea | 2d | 2011-10-03 A | 2011-10-03 A | 100% | finish no earlier than 2011-10-05 | LinhTA | 4h | 4h |
| 51 | 1.1.3.4.9 | Study book "How to build a full CMS project" and give idea | 2d | 2011-10-03 A | 2011-10-03 A | 100% | finish no earlier than 2011-10-05 | ThanhCV | 4h | 4h |
| 52 | 1.1.3.4.10 | Study book "How to build a full CMS project" and give idea | 2d | 2011-10-03 A | 2011-10-03 A | 100% | finish no earlier than 2011-10-05 | ThaoNX | 4h | 4h |
| 53 | 1.1.3.4.11 | Study book "How to build a full CMS project" and give idea | 2d | 2011-10-03 A | 2011-10-03 A | 100% | finish no earlier than 2011-10-05 | ThiVT | 4h | 4h |

| ID | WBS | Task | Duration | Start | Finish | Complete | Remaining | Total slack | Constraint | Resources | Work | Actual work |
| --- | --- | --- | --- | --- | --- | --- | --- | --- | --- | --- | --- | --- |
| 54 | 1.2 | **Analysis and Requirement** | 4d | 2011-10-06 | 2011-10-06 |  |  | 340d |  |  | 8h |  |
| 55 | 1.2.1 | Review Software Specification | 4d | 2011-10-06 | 2011-10-06 |  |  | 340d | start no earlier than 2011-10-06 | All Team | 8h |  |
| 56 | 1.3 | **Design** | 45d | 2011-10-06 A | 2011-10-19 | 33% | 30.33d | 299d |  |  | 192h | 68h |
| 57 | 1.3.1 | **Screen Component Design** | 8d | 2011-10-06 A | 2011-10-07 A | 100% |  |  |  |  | 60h | 60h |
| 58 | 1.3.1.1 | Menu Manager | 2d | 2011-10-06 A | 2011-10-06 A | 100% |  |  | finish no earlier than 2011-10-07 | ThiVT | 4h | 4h |
| 59 | 1.3.1.2 | Configuration | 2d | 2011-10-06 A | 2011-10-06 A | 100% |  |  | finish no earlier than 2011-10-07 | ThaoNX | 4h | 4h |
| 60 | 1.3.1.3 | **Content Manager** | 2d | 2011-10-06 A | 2011-10-06 A | 100% |  |  |  | DungDV + DucNH + TuTM | 16h | 16h |
| 61 | 1.3.1.3.1 | Acticle Manager + Copy Acticle + Move Acticle + Global Configuration Pop-up Window | 2d | 2011-10-06 A | 2011-10-06 A | 100% |  |  | finish no earlier than 2011-10-07 | DucNH | 4h | 4h |
| 62 | 1.3.1.3.2 | Section Manager + Category Manager + Front Page Manager | 2d | 2011-10-06 A | 2011-10-06 A | 100% |  |  | finish no earlier than 2011-10-07 | DungDV | 4h | 4h |
| 63 | 1.3.1.3.3 | Section Edit + Category Edit + Acticle Edit | 2d | 2011-10-06 A | 2011-10-06 A | 100% |  |  | finish no earlier than 2011-10-07 | TuTM | 4h | 4h |
| 64 | 1.3.1.4 | **User Manager** | 2d | 2011-10-06 A | 2011-10-06 A | 100% |  |  |  | ThanhCV + KhoaVT | 12h | 12h |
| 65 | 1.3.1.4.1 | User Manager | 2d | 2011-10-06 A | 2011-10-06 A | 100% |  |  | finish no earlier than 2011-10-07 | KhoaVT | 4h | 4h |
| 66 | 1.3.1.4.2 | New User + Edit User | 2d | 2011-10-06 A | 2011-10-06 A | 100% |  |  | finish no earlier than 2011-10-07 | ThanhCV | 4h | 4h |
| 67 | 1.3.1.5 | **Media Manager** | 2d | 2011-10-06 A | 2011-10-06 A | 100% |  |  |  | HuyNVK + HienTT | 12h | 12h |
| 68 | 1.3.1.5.1 | Media Manager | 2d | 2011-10-06 A | 2011-10-06 A | 100% |  |  | finish no earlier than 2011-10-07 | HienTT | 4h | 4h |
| 69 | 1.3.1.5.2 | Media Option | 2d | 2011-10-06 A | 2011-10-06 A | 100% |  |  | finish no earlier than 2011-10-07 | HuyNVK | 4h | 4h |
| 70 | 1.3.1.6 | Login | 2d | 2011-10-06 A | 2011-10-06 A | 100% |  |  | finish no earlier than 2011-10-07 | LinhTA | 4h | 4h |
| 71 | 1.3.1.7 | Language Manager | 2d | 2011-10-06 A | 2011-10-06 A | 100% |  |  | finish no earlier than 2011-10-07 | LinhTA | 4h | 4h |
| 72 | 1.3.1.8 | Layout and navigation | 2d | 2011-10-06 A | 2011-10-07 A | 100% |  |  | finish no earlier than 2011-10-07 | HuyDV | 4h | 4h |
| 73 | 1.3.2 | **Re-define Component using Screen Design Template** | 1d | 2011-10-14 | 2011-10-14 |  |  | 315d |  |  | 20h |  |
| 74 | 1.3.2.1 | Menu Manager | 1d | 2011-10-14 | 2011-10-14 |  |  | 315d | start no earlier than 2011-10-14 | ThiVT | 2h |  |
| 75 | 1.3.2.2 | Configuaraion | 1d | 2011-10-14 | 2011-10-14 |  |  | 315d | start no earlier than 2011-10-14 | ThaoNX | 2h |  |
| 76 | 1.3.2.3 | **Content Manager** | 1d | 2011-10-14 | 2011-10-14 |  |  | 315d |  |  | 6h |  |
| 77 | 1.3.2.3.1 | Acticle Manager + Copy Manager + Move Acticle + Global Configuration Pop-up Window | 1d | 2011-10-14 | 2011-10-14 |  |  | 315d | start no earlier than 2011-10-14 | DucNH | 2h |  |
| 78 | 1.3.2.3.2 | Section Manager + Category Manager + Front Page Manager | 1d | 2011-10-14 | 2011-10-14 |  |  | 315d | start no earlier than 2011-10-14 | DungDV | 2h |  |
| 79 | 1.3.2.3.3 | Section Edit + Category Edit + Acticle Edit | 1d | 2011-10-14 | 2011-10-14 |  |  | 315d | start no earlier than 2011-10-14 | TuTM | 2h |  |

| ID | WBS | Task | Duration | Start | Finish | Complete | Remaining | Total slack | Constraint | Resources | Work | Actual work |
| --- | --- | --- | --- | --- | --- | --- | --- | --- | --- | --- | --- | --- |
| 80 | 1.3.2.4 | **User Manager** | 1d | 2011-10-14 | 2011-10-14 |  |  | 315d |  |  | 4h |  |
| 81 | 1.3.2.4.1 | User Manager | 1d | 2011-10-14 | 2011-10-14 |  |  | 315d | start no earlier than 2011-10-14 | KhoaVT | 2h |  |
| 82 | 1.3.2.4.2 | New User + Edit User | 1d | 2011-10-14 | 2011-10-14 |  |  | 315d | start no earlier than 2011-10-14 | ThanhCV | 2h |  |
| 83 | 1.3.2.5 | Login | 1d | 2011-10-14 | 2011-10-14 |  |  | 315d | start no earlier than 2011-10-14 | LinhTA | 2h |  |
| 84 | 1.3.2.6 | Language Manager | 1d | 2011-10-14 | 2011-10-14 |  |  | 315d | start no earlier than 2011-10-14 | LinhTA | 2h |  |
| 85 | 1.3.2.7 | Layout and Navigation | 1d | 2011-10-14 | 2011-10-14 |  |  | 315d | start no earlier than 2011-10-14 | HuyDV | 2h |  |
| 86 | 1.3.3 | **Study PHP, MySQL and Zend Frame Work** | 10d | 2011-10-14 | 2011-10-17 |  |  | 306d |  |  | 16h |  |
| 87 | 1.3.3.1 | Demo login using PHP, MySQL | 2d | 2011-10-14 | 2011-10-14 |  |  | 314d | start no earlier than 2011-10-14 | TuanVA | 4h |  |
| 88 | 1.3.3.2 | Demo login using PHP, MySQL | 2d | 2011-10-14 | 2011-10-14 |  |  | 314d | start no earlier than 2011-10-14 | BaoNDD | 4h |  |
| 89 | 1.3.3.3 | Study Book "How to build a full CMS" and give idea. | 2d | 2011-10-17 | 2011-10-17 |  |  | 306d | start no earlier than 2011-10-17 | TuanVA | 4h |  |
| 90 | 1.3.3.4 | Study Book "How to build a full CMS" and give idea. | 2d | 2011-10-17 | 2011-10-17 |  |  | 306d | start no earlier than 2011-10-17 | BaoNDD | 4h |  |
| 91 | 1.3.4 | **Screen Prototype** | 4d | 2011-10-15 A | 2011-10-15 | 23% | 3.08d | 308d |  |  | 48h | 8h |
| 92 | 1.3.4.1 | Menu Manager | 2d | 2011-10-15 | 2011-10-15 |  |  | 310d | start no earlier than 2011-10-15 | ThiVT | 4h |  |
| 93 | 1.3.4.2 | Configuaraion | 2d | 2011-10-15 | 2011-10-15 |  |  | 310d | start no earlier than 2011-10-15 | ThaoNX | 4h |  |
| 94 | 1.3.4.3 | **Content Manager** | 2d | 2011-10-15 | 2011-10-15 |  |  | 310d |  |  | 12h |  |
| 95 | 1.3.4.3.1 | Acticle Manager + Copy Manager + Move Acticle + Global Configuration Pop-up Window | 2d | 2011-10-15 | 2011-10-15 |  |  | 310d | start no earlier than 2011-10-15 | DucNH | 4h |  |
| 96 | 1.3.4.3.2 | Section Manager + Category Manager + Front Page Manager | 2d | 2011-10-15 | 2011-10-15 |  |  | 310d | start no earlier than 2011-10-15 | DungDV | 4h |  |
| 97 | 1.3.4.3.3 | Section Edit + Category Edit + Acticle Edit | 2d | 2011-10-15 | 2011-10-15 |  |  | 310d | start no earlier than 2011-10-15 | TuTM | 4h |  |
| 98 | 1.3.4.4 | **User Manager** | 2d | 2011-10-15 | 2011-10-15 |  |  | 310d |  |  | 8h |  |
| 99 | 1.3.4.4.1 | User Manager | 2d | 2011-10-15 | 2011-10-15 |  |  | 310d | start no earlier than 2011-10-15 | KhoaVT | 4h |  |
| 100 | 1.3.4.4.2 | New User + Edit User | 2d | 2011-10-15 | 2011-10-15 |  |  | 310d | start no earlier than 2011-10-15 | ThanhCV | 4h |  |
| 101 | 1.3.4.5 | **Media Manager** | 4d | 2011-10-15 A | 2011-10-15 A | 100% |  |  |  |  | 8h | 8h |
| 102 | 1.3.4.5.1 | Media Manager | 2d | 2011-10-15 A | 2011-10-15 A | 100% |  |  | start no earlier than 2011-10-15 | HienTT | 4h | 4h |
| 103 | 1.3.4.5.2 | Media Option | 4d | 2011-10-15 A | 2011-10-15 A | 100% |  |  | start no earlier than 2011-10-15 | HuyNVK | 4h | 4h |
| 104 | 1.3.4.6 | Login | 2d | 2011-10-15 | 2011-10-15 |  |  | 310d | start no earlier than 2011-10-15 | LinhTA | 4h |  |
| 105 | 1.3.4.7 | Language Manager | 2d | 2011-10-15 | 2011-10-15 |  |  | 310d | start no earlier than 2011-10-15 | LinhTA | 4h |  |
| 106 | 1.3.4.8 | Layout and Navigation | 2d | 2011-10-15 | 2011-10-15 |  |  | 310d | start no earlier than 2011-10-15 | HuyDV | 4h |  |

| ID | WBS | Task | Duration | Start | Finish | Total slack | Constraint | Resources | Work |
| --- | --- | --- | --- | --- | --- | --- | --- | --- | --- |
| 107 | 1.3.5 | **Mapping screen items to Database** | 1d | 2011-10-18 | 2011-10-18 | 303d |  |  | 24h |
| 108 | 1.3.5.1 | Menu Manager | 1d | 2011-10-18 | 2011-10-18 | 303d | start no earlier than 2011-10-18 | ThiVT | 2h |
| 109 | 1.3.5.2 | Configuaraion | 1d | 2011-10-18 | 2011-10-18 | 303d | start no earlier than 2011-10-18 | ThaoNX | 2h |
| 110 | 1.3.5.3 | **Content Manager** | 1d | 2011-10-18 | 2011-10-18 | 303d |  |  | 6h |
| 111 | 1.3.5.3.1 | Acticle Manager + Copy Manager + Move Acticle + Global Configuration Pop-up Window | 1d | 2011-10-18 | 2011-10-18 | 303d | start no earlier than 2011-10-18 | DucNH | 2h |
| 112 | 1.3.5.3.2 | Section Manager + Category Manager + Front Page Manager | 1d | 2011-10-18 | 2011-10-18 | 303d | start no earlier than 2011-10-18 | DungDV | 2h |
| 113 | 1.3.5.3.3 | Section Edit + Category Edit + Acticle Edit | 1d | 2011-10-18 | 2011-10-18 | 303d | start no earlier than 2011-10-18 | TuTM | 2h |
| 114 | 1.3.5.4 | **User Manager** | 1d | 2011-10-18 | 2011-10-18 | 303d |  |  | 4h |
| 115 | 1.3.5.4.1 | User Manager | 1d | 2011-10-18 | 2011-10-18 | 303d | start no earlier than 2011-10-18 | KhoaVT | 2h |
| 116 | 1.3.5.4.2 | New User + Edit User | 1d | 2011-10-18 | 2011-10-18 | 303d | start no earlier than 2011-10-18 | ThanhCV | 2h |
| 117 | 1.3.5.5 | **Media Manager** | 1d | 2011-10-18 | 2011-10-18 | 303d |  |  | 4h |
| 118 | 1.3.5.5.1 | Media Manager | 1d | 2011-10-18 | 2011-10-18 | 303d | start no earlier than 2011-10-18 | TuanVA | 2h |
| 119 | 1.3.5.5.2 | Media Option | 1d | 2011-10-18 | 2011-10-18 | 303d | start no earlier than 2011-10-18 | BaoNDD | 2h |
| 120 | 1.3.5.6 | Login | 1d | 2011-10-18 | 2011-10-18 | 303d | start no earlier than 2011-10-18 | LinhTA | 2h |
| 121 | 1.3.5.7 | Language Manager | 1d | 2011-10-18 | 2011-10-18 | 303d | start no earlier than 2011-10-18 | LinhTA | 2h |
| 122 | 1.3.5.8 | Layout and Navigation | 1d | 2011-10-18 | 2011-10-18 | 303d | start no earlier than 2011-10-18 | HuyDV | 2h |
| 123 | 1.3.6 | **Events** | 1d | 2011-10-19 | 2011-10-19 | 299d |  |  | 24h |
| 124 | 1.3.6.1 | Menu Manager | 1d | 2011-10-19 | 2011-10-19 | 299d | start no earlier than 2011-10-19 | ThiVT | 2h |
| 125 | 1.3.6.2 | Configuaraion | 1d | 2011-10-19 | 2011-10-19 | 299d | start no earlier than 2011-10-19 | ThaoNX | 2h |
| 126 | 1.3.6.3 | **Content Manager** | 1d | 2011-10-19 | 2011-10-19 | 299d |  |  | 6h |
| 127 | 1.3.6.3.1 | Acticle Manager + Copy Manager + Move Acticle + Global Configuration Pop-up Window | 1d | 2011-10-19 | 2011-10-19 | 299d | start no earlier than 2011-10-19 | DucNH | 2h |
| 128 | 1.3.6.3.2 | Section Manager + Category Manager + Front Page Manager | 1d | 2011-10-19 | 2011-10-19 | 299d | start no earlier than 2011-10-19 | DungDV | 2h |
| 129 | 1.3.6.3.3 | Section Edit + Category Edit + Acticle Edit | 1d | 2011-10-19 | 2011-10-19 | 299d | start no earlier than 2011-10-19 | TuTM | 2h |
| 130 | 1.3.6.4 | **User Manager** | 1d | 2011-10-19 | 2011-10-19 | 299d |  |  | 4h |
| 131 | 1.3.6.4.1 | User Manager | 1d | 2011-10-19 | 2011-10-19 | 299d | start no earlier than 2011-10-19 | KhoaVT | 2h |
| 132 | 1.3.6.4.2 | New User + Edit User | 1d | 2011-10-19 | 2011-10-19 | 299d | start no earlier than 2011-10-19 | ThanhCV | 2h |

| ID | WBS | Task | Duration | Start | Finish | Predecessors | Total slack | Free slack | Constraint | Resources | Work |
| --- | --- | --- | --- | --- | --- | --- | --- | --- | --- | --- | --- |
| 133 | 1.3.6.5 | **Media Manager** | 1d | 2011-10-19 | 2011-10-19 |  | 299d |  |  |  | 4h |
| 134 | 1.3.6.5.1 | Media Manager | 1d | 2011-10-19 | 2011-10-19 |  | 299d |  | start no earlier than 2011-10-19 | TuanVA | 2h |
| 135 | 1.3.6.5.2 | Media Option | 1d | 2011-10-19 | 2011-10-19 |  | 299d |  | start no earlier than 2011-10-19 | BaoNDD | 2h |
| 136 | 1.3.6.6 | Login | 1d | 2011-10-19 | 2011-10-19 |  | 299d |  | start no earlier than 2011-10-19 | LinhTA | 2h |
| 137 | 1.3.6.7 | Language Manager | 1d | 2011-10-19 | 2011-10-19 |  | 299d |  | start no earlier than 2011-10-19 | LinhTA | 2h |
| 138 | 1.3.6.8 | Layout and Navigation | 1d | 2011-10-19 | 2011-10-19 |  | 299d |  | start no earlier than 2011-10-19 | HuyDV | 2h |
| 139 | 1.4 | Development | 228d? | 2011-09-15 | 2011-11-19 |  | 180d | 0d |  |  |  |
| 140 | 1.5 | Testing | 4d? | 2011-11-21 | 2011-11-21 | 139 | 180d | 0d |  |  |  |
| 141 | 1.6 | Documentation | 4d? | 2011-11-22 | 2011-11-22 | 140 | 180d |  |  |  |  |
| 142 | 1.7 | Deployment & Pilot | 4d? | 2012-01-13 | 2012-01-13 |  | 0d |  | start no earlier than 2012-01-13 |  |  |
